# Construction schedule v1.0

Schedule from an IFC model, 2027-03-01 to 2027-10-23.
Markermeerdijk Dike Reinforcement

## Schedule

| ID | Activity | Type | Duration | Start | Finish | Predecessors | Planned start | Planned finish | Total float | Free float |
| --- | --- | --- | --- | --- | --- | --- | --- | --- | --- | --- |
| 1 | **1. Preparation** |  | 35d | 2027-03-01 | 2027-04-13 |  | 2027-03-01 | 2027-03-05 | 0d |  |
| 1.1 | Ecological survey |  | 10d | 2027-03-01 | 2027-03-11 |  | 2027-03-01 | 2027-03-12 | 0d |  |
| 1.2 | Water management permits |  | 5d | 2027-03-12 | 2027-03-17 | 1.1 | 2027-03-01 | 2027-03-05 | 144d | 0d |
| 1.3 | Complete land acquisition |  | 5d | 2027-03-18 | 2027-03-23 | 1.2 | 2027-03-01 | 2027-03-05 | 144d | 0d |
| 1.4 | Construct site roads |  | 10d | 2027-03-24 | 2027-04-06 | 1.3 | 2027-03-01 | 2027-03-12 | 144d | 0d |
| 1.5 | Set up depots |  | 5d | 2027-04-07 | 2027-04-12 | 1.4 | 2027-03-01 | 2027-03-05 | 144d | 0d |
| 1.6 | Start of works | milestone | 0d | 2027-04-13 | 2027-04-13 | 1.5 | 2027-03-01 | 2027-03-01 | 144d |  |
| 2 | **2. Preloading** |  | 60d | 2027-03-22 | 2027-06-05 |  | 2027-03-01 | 2027-03-05 | 0d |  |
| 2.1 | Deliver soil to depot |  | 15d | 2027-03-22 | 2027-04-09 | 1.1 SS+18d | 2027-03-01 | 2027-03-19 | 0d |  |
| 2.2 | Preloading, km 0-1 |  | 10d | 2027-04-10 | 2027-04-21 | 2.1 | 2027-03-01 | 2027-03-12 | 102d | 0d |
| 2.3 | Preloading, km 1-2 |  | 10d | 2027-04-16 | 2027-04-28 | 2.2 SS+5d | 2027-03-01 | 2027-03-12 | 102d | 0d |
| 2.4 | Preloading, km 2-3 |  | 10d | 2027-04-29 | 2027-05-12 | 2.3 | 2027-03-01 | 2027-03-12 | 102d | 0d |
| 2.5 | Await settlement period |  | 20d | 2027-05-13 | 2027-06-05 | 2.4 | 2027-03-01 | 2027-03-26 | 102d | 0d |
| 2.6 | Settlement monitoring |  | 20d | 2027-05-13 | 2027-06-05 | 2.5 SS | 2027-03-01 | 2027-03-26 | 102d |  |
| 3 | **3. Embankment** |  | 65d | 2027-03-31 | 2027-06-18 |  | 2027-03-01 | 2027-03-05 | 0d |  |
| 3.1 | Remove preloading |  | 10d | 2027-03-31 | 2027-04-10 | 2.1 SS | 2027-03-01 | 2027-03-12 | 0d |  |
| 3.2 | Install geotextile |  | 8d | 2027-04-12 | 2027-04-20 | 3.1 | 2027-03-01 | 2027-03-10 | 0d |  |
| 3.3 | Build up clay core, km 0-2 |  | 15d | 2027-04-21 | 2027-05-11 | 3.2 | 2027-03-01 | 2027-03-19 | 0d |  |
| 3.4 | Build up clay core, km 2-5 |  | 15d | 2027-05-12 | 2027-05-29 | 3.3 | 2027-03-01 | 2027-03-19 | 0d |  |
| 3.5 | Place sand core |  | 12d | 2027-05-31 | 2027-06-12 | 3.4 | 2027-03-01 | 2027-03-16 | 0d |  |
| 3.6 | Survey profile check |  | 5d | 2027-06-14 | 2027-06-18 | 3.5 | 2027-03-01 | 2027-03-05 | 0d |  |
| 4 | **4. Revetment & erosion protection** |  | 40d | 2027-06-04 | 2027-07-20 |  | 2027-03-01 | 2027-03-05 | 0d |  |
| 4.1 | Stone revetment, inner slope |  | 12d | 2027-06-04 | 2027-06-17 | 3.6 FS-13d | 2027-03-01 | 2027-03-16 | 0d |  |
| 4.2 | Grass cover, outer slope |  | 10d | 2027-06-18 | 2027-06-29 | 4.1 | 2027-03-01 | 2027-03-12 | 0d |  |
| 4.3 | Toe structure, waterside |  | 10d | 2027-06-30 | 2027-07-10 | 4.2 | 2027-03-01 | 2027-03-12 | 0d |  |
| 4.4 | Place toe protection berm |  | 8d | 2027-07-12 | 2027-07-20 | 4.3, 3.6 FF+2d | 2027-03-01 | 2027-03-10 | 0d |  |

| ID | Activity | Type | Duration | Start | Finish | Predecessors | Planned start | Planned finish | Total float |
| --- | --- | --- | --- | --- | --- | --- | --- | --- | --- |
| 5 | **5. Civil structures** |  | 31d | 2027-07-21 | 2027-09-15 |  | 2027-03-01 | 2027-03-05 | 0d |
| 5.1 | Culvert renovation |  | 10d | 2027-07-21 | 2027-08-21 | 4.4 | 2027-03-01 | 2027-03-12 | 0d |
| 5.2 | Modify pumping station |  | 8d | 2027-08-23 | 2027-08-31 | 5.1 | 2027-03-01 | 2027-03-10 | 0d |
| 5.3 | Barrier lock maintenance |  | 5d | 2027-09-01 | 2027-09-06 | 5.2 | 2027-03-01 | 2027-03-05 | 0d |
| 5.4 | Stairs and transitions |  | 8d | 2027-09-07 | 2027-09-15 | 5.3 | 2027-03-01 | 2027-03-10 | 0d |
| 6 | **6. Finishing & reinstatement** |  | 33d | 2027-09-16 | 2027-10-23 |  | 2027-03-01 | 2027-03-05 | 0d |
| 6.1 | Reinstate dike road |  | 10d | 2027-09-16 | 2027-09-27 | 5.4 | 2027-03-01 | 2027-03-12 | 0d |
| 6.2 | Construct cycle path |  | 8d | 2027-09-28 | 2027-10-06 | 6.1 | 2027-03-01 | 2027-03-10 | 0d |
| 6.3 | Ecological restoration |  | 10d | 2027-10-07 | 2027-10-18 | 6.2 | 2027-03-01 | 2027-03-12 | 0d |
| 6.4 | Fencing and signage |  | 5d | 2027-10-19 | 2027-10-23 | 6.3 | 2027-03-01 | 2027-03-05 | 0d |
| 6.5 | Handover | milestone | 0d | 2027-10-23 | 2027-10-23 | 6.4 | 2027-03-01 | 2027-03-01 | 0d |
