# Construction schedule v1.0

Schedule from an IFC model, 2027-03-01 to 2028-06-28.
60-Home Residential District, Almere

## Schedule

| ID | Activity | Type | Duration | Start | Finish | Predecessors | Planned start | Planned finish | Total float | Free float | Resources |
| --- | --- | --- | --- | --- | --- | --- | --- | --- | --- | --- | --- |
| 1 | **1. Site preparation** |  | 38d | 2027-03-01 | 2027-04-26 |  | 2027-03-01 | 2027-03-05 | 0d |  |  |
| 1.1 | Clear and level site |  | 8d | 2027-03-01 | 2027-03-10 |  |  |  | 0d |  |  |
| 1.2 | Install main sewer |  | 12d | 2027-03-11 | 2027-03-30 | 1.1 | 2027-03-01 | 2027-03-16 | 282d | 0d | Civils contractor |
| 1.3 | Utility main |  | 10d | 2027-03-31 | 2027-04-13 | 1.2 | 2027-03-01 | 2027-03-12 | 282d | 0d | Civils contractor |
| 1.4 | Construct site roads |  | 8d | 2027-04-14 | 2027-04-23 | 1.3 | 2027-03-01 | 2027-03-10 | 282d | 0d | Civils contractor |
| 1.5 | Start of construction | milestone | 0d | 2027-04-26 | 2027-04-26 | 1.4 | 2027-03-01 | 2027-03-01 | 282d |  |  |
| 2 | **2. Foundations phase 1 (blocks 1-3)** |  | 39d | 2027-03-30 | 2027-05-27 |  | 2027-03-01 | 2027-03-05 | 0d |  |  |
| 2.1 | Piling block 1 (10 terraced houses) |  | 8d | 2027-03-30 | 2027-04-08 | 1.1 SS+19d | 2027-03-01 | 2027-03-10 | 0d |  |  |
| 2.2 | Piling block 2 (10 terraced houses) |  | 8d | 2027-04-09 | 2027-04-20 | 2.1 | 2027-03-01 | 2027-03-10 | 262d | 0d |  |
| 2.3 | Piling block 3 (10 terraced houses) |  | 8d | 2027-04-14 | 2027-04-23 | 2.2 SS+3d | 2027-03-01 | 2027-03-10 | 262d | 0d |  |
| 2.4 | Foundation beams, blocks 1-3 |  | 10d | 2027-04-26 | 2027-05-12 | 2.3 | 2027-03-01 | 2027-03-12 | 262d | 0d | Concrete C20/25 |
| 2.5 | Ground floor slab, blocks 1-3 |  | 10d | 2027-05-13 | 2027-05-27 | 2.4 | 2027-03-01 | 2027-03-12 | 262d |  | Concrete C20/25 |
| 3 | **3. Foundations phase 2 (blocks 4-5)** |  | 27d | 2027-04-02 | 2027-05-14 |  | 2027-03-01 | 2027-03-05 | 0d |  |  |
| 3.1 | Piling block 4 (10 terraced houses) |  | 8d | 2027-04-02 | 2027-04-14 | 2.1 SS | 2027-03-01 | 2027-03-10 | 0d |  |  |
| 3.2 | Piling block 5 (10 semi-detached) |  | 8d | 2027-04-07 | 2027-04-19 | 3.1 SS+3d | 2027-03-01 | 2027-03-10 | 0d |  |  |
| 3.3 | Foundation beams, blocks 4-5 |  | 8d | 2027-04-19 | 2027-04-30 | 3.2 | 2027-03-01 | 2027-03-10 | 0d |  | Concrete C20/25 |
| 3.4 | Ground floor slab, blocks 4-5 |  | 8d | 2027-04-30 | 2027-05-14 | 3.3 | 2027-03-01 | 2027-03-10 | 0d |  | Concrete C20/25 |
| 4 | **4. Structural works phase 1** |  | 62d | 2027-05-04 | 2027-08-24 |  | 2027-03-01 | 2027-03-05 | 0d |  |  |
| 4.1 | Masonry ground floor, blocks 1-3 |  | 15d | 2027-05-04 | 2027-05-28 | 3.4 FS-6d | 2027-03-01 | 2027-03-19 | 0d |  | Bricklayers |
| 4.2 | Upper floor slab, blocks 1-3 |  | 10d | 2027-05-28 | 2027-06-11 | 4.1 | 2027-03-01 | 2027-03-12 | 0d |  |  |
| 4.3 | Masonry upper floor, blocks 1-3 |  | 15d | 2027-06-11 | 2027-07-02 | 4.2 | 2027-03-01 | 2027-03-19 | 0d |  | Bricklayers |
| 4.4 | Roof structure, blocks 1-3 |  | 12d | 2027-07-02 | 2027-07-20 | 4.3 | 2027-03-01 | 2027-03-16 | 0d |  | Carpenters |
| 4.5 | Roof tiles, blocks 1-3 |  | 10d | 2027-07-20 | 2027-08-24 | 4.4 | 2027-03-01 | 2027-03-12 | 0d |  | Carpenters |
| 4.6 | Topping out, phase 1 | milestone | 0d | 2027-08-24 | 2027-08-24 | 4.5 | 2027-03-01 | 2027-03-01 | 215d |  |  |

| ID | Activity | Type | Duration | Start | Finish | Predecessors | Planned start | Planned finish | Total float | Free float | Resources |
| --- | --- | --- | --- | --- | --- | --- | --- | --- | --- | --- | --- |
| 5 | **5. Structural works phase 2** |  | 53d | 2027-08-24 | 2027-11-05 |  | 2027-03-01 | 2027-03-05 | 0d |  |  |
| 5.1 | Masonry ground floor, blocks 4-5 |  | 15d | 2027-08-24 | 2027-09-14 | 4.5 | 2027-03-01 | 2027-03-19 | 0d |  | Bricklayers |
| 5.2 | Upper floor slab, blocks 4-5 |  | 8d | 2027-09-14 | 2027-09-24 | 5.1 | 2027-03-01 | 2027-03-10 | 160d | 0d |  |
| 5.3 | Masonry upper floor, blocks 4-5 |  | 12d | 2027-09-24 | 2027-10-12 | 5.2 | 2027-03-01 | 2027-03-16 | 160d | 0d | Bricklayers |
| 5.4 | Roof structure, blocks 4-5 |  | 10d | 2027-10-12 | 2027-10-26 | 5.3 | 2027-03-01 | 2027-03-12 | 160d | 0d | Carpenters |
| 5.5 | Roof tiles, blocks 4-5 |  | 8d | 2027-10-26 | 2027-11-05 | 5.4 | 2027-03-01 | 2027-03-10 | 160d | 0d | Carpenters |
| 5.6 | Topping out, phase 2 | milestone | 0d | 2027-11-05 | 2027-11-05 | 5.5 | 2027-03-01 | 2027-03-01 | 162d |  |  |
| 6 | **6. Facades & roofs** |  | 38d | 2027-09-30 | 2027-11-23 |  | 2027-03-01 | 2027-03-05 | 0d |  |  |
| 6.1 | Window frames, blocks 1-3 |  | 10d | 2027-09-30 | 2027-10-14 | 5.1 SS+27d | 2027-03-01 | 2027-03-12 | 0d |  | Carpenters |
| 6.2 | Window frames, blocks 4-5 |  | 8d | 2027-10-14 | 2027-10-26 | 6.1 | 2027-03-01 | 2027-03-10 | 150d | 0d | Carpenters |
| 6.3 | Facade sealing and insulation |  | 12d | 2027-10-26 | 2027-11-11 | 6.2 | 2027-03-01 | 2027-03-16 | 150d | 0d |  |
| 6.4 | Gutters and rainwater downpipes |  | 8d | 2027-11-11 | 2027-11-23 | 6.3, 5.5 FF+2d | 2027-03-01 | 2027-03-10 | 150d | 0d |  |
| 6.5 | Wind and weathertight, all blocks | milestone | 0d | 2027-11-23 | 2027-11-23 | 6.4 | 2027-03-01 | 2027-03-01 | 150d |  |  |
| 7 | **7. Building services** |  | 56d | 2027-10-06 | 2027-12-23 |  | 2027-03-01 | 2027-03-05 | 0d |  |  |
| 7.1 | Electrical, blocks 1-3 |  | 12d | 2027-10-06 | 2027-10-22 | 6.1 SS | 2027-03-01 | 2027-03-16 | 0d |  | MEP fitters |
| 7.2 | Electrical, blocks 4-5 |  | 8d | 2027-10-13 | 2027-10-25 | 7.1 SS+5d | 2027-03-01 | 2027-03-10 | 0d |  | MEP fitters |
| 7.3 | Plumbing, blocks 1-3 |  | 10d | 2027-10-25 | 2027-11-08 | 7.2 | 2027-03-01 | 2027-03-12 | 0d |  | MEP fitters |
| 7.4 | Plumbing, blocks 4-5 |  | 8d | 2027-11-08 | 2027-11-18 | 7.3 | 2027-03-01 | 2027-03-10 | 0d |  | MEP fitters |
| 7.5 | Heat pumps, all dwellings |  | 15d | 2027-11-18 | 2027-12-09 | 7.4 | 2027-03-01 | 2027-03-19 | 0d |  | MEP fitters |
| 7.6 | Heat recovery ventilation units |  | 10d | 2027-12-09 | 2027-12-23 | 7.5 | 2027-03-01 | 2027-03-12 | 0d |  | MEP fitters |
| 8 | **8. Fit-out phase 1** |  | 51d | 2027-12-06 | 2028-02-15 |  | 2027-03-01 | 2027-03-05 | 0d |  |  |
| 8.1 | Plastering, blocks 1-3 |  | 15d | 2027-12-06 | 2027-12-27 | 7.6 FS-13d | 2027-03-01 | 2027-03-19 | 0d |  | Plasterers |
| 8.2 | Tiling, blocks 1-3 |  | 10d | 2027-12-27 | 2028-01-10 | 8.1 | 2027-03-01 | 2027-03-12 | 0d |  | Tilers |
| 8.3 | Kitchens, blocks 1-3 |  | 8d | 2028-01-10 | 2028-01-20 | 8.2 | 2027-03-01 | 2027-03-10 | 0d |  | Kitchen fitters |
| 8.4 | Painting, blocks 1-3 |  | 10d | 2028-01-20 | 2028-02-03 | 8.3 | 2027-03-01 | 2027-03-12 | 0d |  | Painters |
| 8.5 | Floor finishes, blocks 1-3 |  | 8d | 2028-02-03 | 2028-02-15 | 8.4 | 2027-03-01 | 2027-03-10 | 0d |  |  |

| ID | Activity | Type | Duration | Start | Finish | Predecessors | Planned start | Planned finish | Total float | Free float | Resources |
| --- | --- | --- | --- | --- | --- | --- | --- | --- | --- | --- | --- |
| 9 | **9. Fit-out phase 2** |  | 38d | 2028-02-15 | 2028-04-07 |  | 2027-03-01 | 2027-03-05 | 0d |  |  |
| 9.1 | Plastering, blocks 4-5 |  | 12d | 2028-02-15 | 2028-03-02 | 8.5 | 2027-03-01 | 2027-03-16 | 0d |  | Plasterers |
| 9.2 | Tiling, blocks 4-5 |  | 8d | 2028-03-02 | 2028-03-14 | 9.1 | 2027-03-01 | 2027-03-10 | 52d | 0d | Tilers |
| 9.3 | Kitchens, blocks 4-5 |  | 5d | 2028-03-14 | 2028-03-21 | 9.2 | 2027-03-01 | 2027-03-05 | 52d | 0d | Kitchen fitters |
| 9.4 | Painting, blocks 4-5 |  | 8d | 2028-03-21 | 2028-03-31 | 9.3 | 2027-03-01 | 2027-03-10 | 52d | 0d | Painters |
| 9.5 | Floor finishes, blocks 4-5 |  | 5d | 2028-03-31 | 2028-04-07 | 9.4 | 2027-03-01 | 2027-03-05 | 52d |  |  |
| 10 | **10. Final site works** |  | 51d | 2028-03-13 | 2028-05-30 |  | 2027-03-01 | 2027-03-05 | 0d |  |  |
| 10.1 | Connect permanent sewer |  | 8d | 2028-03-13 | 2028-03-23 | 9.1 SS+19d | 2027-03-01 | 2027-03-10 | 0d |  | Civils contractor |
| 10.2 | Paving and pavements |  | 15d | 2028-03-23 | 2028-04-13 | 10.1 | 2027-03-01 | 2027-03-19 | 0d |  | Civils contractor |
| 10.3 | Construct parking spaces |  | 8d | 2028-04-13 | 2028-04-28 | 10.2 | 2027-03-01 | 2027-03-10 | 0d |  | Civils contractor |
| 10.4 | Landscaping and trees |  | 10d | 2028-04-28 | 2028-05-15 | 10.3 | 2027-03-01 | 2027-03-12 | 0d |  | Civils contractor |
| 10.5 | Play equipment |  | 5d | 2028-05-15 | 2028-05-22 | 10.4 | 2027-03-01 | 2027-03-05 | 0d |  |  |
| 10.6 | Street lighting |  | 5d | 2028-05-22 | 2028-05-30 | 10.5 | 2027-03-01 | 2027-03-05 | 0d |  |  |
| 11 | **11. Handover** |  | 20d | 2028-05-30 | 2028-06-28 |  | 2027-03-01 | 2027-03-05 | 0d |  |  |
| 11.1 | Pre-handover inspection, phase 1 |  | 5d | 2028-05-30 | 2028-06-07 | 10.6 | 2027-03-01 | 2027-03-05 | 0d |  |  |
| 11.2 | Pre-handover inspection, phase 2 |  | 5d | 2028-06-07 | 2028-06-14 | 11.1 | 2027-03-01 | 2027-03-05 | 0d |  |  |
| 11.3 | Handover of dwellings |  | 10d | 2028-06-14 | 2028-06-28 | 11.2 | 2027-03-01 | 2027-03-12 | 0d |  |  |
| 11.4 | Residential district complete | milestone | 0d | 2028-06-28 | 2028-06-28 | 11.3 | 2027-03-01 | 2027-03-01 | 0d |  |  |
