# Ontwikkeling 30 drijvende woningen Oosterhoutseplas

Schedule from an IFC model.

## Schedule

| ID | Activity | Type | Predecessors |
| --- | --- | --- | --- |
| 1 | **Aankoop en overdracht** |  |  |
| 1.1 | Aankoop en overeenkomst |  |  |
| 1.2 | Voorlopige gunning | milestone |  |
| 1.3 | Definitieve gunning |  |  |
| 1.4 | Indienen plan | milestone |  |
| 1.5 | Presenteren plan | milestone |  |
| 1.6 | Voorlopige gunningsbeslissing | milestone |  |
| 1.7 | Definitieve gunningsbeslissing | milestone |  |
| 9 | **Definitief ontwerp** |  |  |
| 9.1 | Vaststellen eventuele bijstellen en startdocument |  | 1.7 |
| 9.2 | Doorvoeren wijzigingen in ontwerp |  | 9.1 |
| 9.3 | Bouwfysica en bouwbesluittoets |  | 9.2 |
| 9.4 | Constructieberekeningen en tekeningen |  | 9.2 |
| 9.5 | Installatieadviezen |  | 9.2 |
| 9.6 | Bijstellen bouwkundige stukken |  | 9.3, 9.4, 9.5 |
| 9.7 | Begroting |  | 9.6 |
| 9.8 | Vaststellen stukken voor aanvraag omgevingsvergunning |  | 9.7 |
| 18 | **Uitvoerings ontwerp** |  |  |
| 18.1 | Maken Technisch model |  | 9.8 |
| 18.2 | Maken uitvoeringstekeningen per type |  | 18.1 |
| 18.3 | Constructieve tekeningen en waperingstekeningen per type |  | 18.1 |
| 18.4 | Bouwkundige details per type |  | 18.2, 18.3 |
| 18.5 | Woningspecifieke wijzigingen doorvoeren |  | 18.4 |
| 24 | **Vergunningen** |  |  |
| 24.1 | Indienen aanvraag omgevingsvergunning |  | 9.8 |
| 24.2 | Behandeltermijn |  | 24.1 |
| 24.3 | Ter inzagelegging |  | 24.2 |
| 24.4 | Vergunning onherroepelijk | milestone | 24.3 |

| ID | Activity | Type | Predecessors |
| --- | --- | --- | --- |
| 29 | **Verkoop** |  |  |
| 29.1 | Produceren verkoopstukken |  | 9.8 |
| 29.2 | Verkoopvoorbereiding |  | 29.1 |
| 29.3 | Start verkoop | milestone | 29.2 |
| 29.4 | Verkooptijd tot min. 80% verkocht (per fase) |  | 29.3 |
| 29.5 | Mijlpaal 80% verkocht => is bouwen | milestone | 29.4 |
| 29.6 | Koperskeuze traject (1e won) |  |  |
| 29.7 | Grondoverdracht van gemeente naar ontwikkelaar |  |  |
| 29.8 | Grondoverdracht van ontwikkelaar naar kopers |  |  |
| 29.9 | Start bouw | milestone |  |
| 39 | **Realisatie** |  |  |
| 39.1 | **FASE 1** |  |  |
| 40.1 | **Realisatie woningen fase 1** |  |  |
| 41.1 | Bouwvoorbereiding |  | 29.5, 24.4 |
| 41.2 | Bouwplaatsinrichting incl. Hellingbaan |  | 41.1 |
| 41.3 | Woning 1 |  | 41.2 |
| 41.4 | Woning 2 |  | 41.3 SS |
| 41.5 | Woning 3 |  | 41.4 SS |
| 41.6 | Woning 4 |  | 41.5 SS |
| 41.7 | Woning 5 |  | 41.6 SS |
| 41.8 | Woning 6 |  | 41.7 SS |
| 41.9 | Woning 7 |  | 41.8 SS |
| 41.10 | Woning 8 |  | 41.9 SS |
| 41.11 | Woning 9 |  | 41.10 SS |
| 41.12 | Woning 10 |  | 41.11 SS |

| ID | Activity | Predecessors |
| --- | --- | --- |
| 40.2 | **Realisatie steigers fase 1** |  |
| 54.1 | Aanbrengen afmeervoorziening fase 1 + afbouwlocatie (steiger 0, 1 en 2) |  |
| 54.2 | Drijvend steiger 0 | 54.1 |
| 54.3 | Drijvend steiger 1 | 54.2 |
| 54.4 | Drijvend steiger 2 | 54.3 |
| 40.3 | **Openbaar ruimte fase 1** |  |
| 59.1 | Aanleg infra |  |
| 59.2 | Kabels en leidingen (NUTS) | 59.1 SS |
| 59.3 | Landhoofd brug (1, 2 en 4) | 59.2 |
| 59.4 | Meterkasten en aansluiten (steiger 1 en 2) | 59.3 |
| 59.5 | Bekabeling en verlichting | 59.4 |
| 59.6 | Oevers | 59.5 SS |
| 59.7 | Verharding | 59.6 |
| 59.8 | Beplanting | 59.7 |
| 39.2 | **FASE 2** |  |
| 68.1 | **Realisatie woningen fase 2** |  |
| 69.1 | Woning 11 | 41.12 SS |
| 69.2 | Woning 12 | 69.1 SS |
| 69.3 | Woning 13 | 69.2 SS |
| 69.4 | Woning 14 | 69.3 SS |
| 69.5 | Woning 15 | 69.4 SS |
| 69.6 | Woning 16 | 69.5 SS |
| 69.7 | Woning 17 | 69.6 SS |
| 69.8 | Woning 18 | 69.7 SS |
| 69.9 | Woning 19 | 69.8 SS |
| 69.10 | Woning 20 | 69.9 SS |

| ID | Activity | Predecessors |
| --- | --- | --- |
| 68.2 | **Realisatie steigers fase 2** |  |
| 80.1 | Aanbrengen afmeervoorziening fase 2 en 3 (steiger 3, 4 en 5) |  |
| 80.2 | Drijvend steiger 3 | 80.1 |
| 80.3 | Drijvend steiger 4 | 80.2 |
| 68.3 | **Openbaar ruimte fase 2** |  |
| 84.1 | Landhoofd brug (steiger 3 en 4) |  |
| 84.2 | Meterkasten en aansluiten (steiger 3 en 4) | 84.1 SS |
| 84.3 | Bekabeling en verlichting | 84.2 |
| 84.4 | Oevers | 84.3 SS |
| 84.5 | Verharding | 84.4 |
| 84.6 | Beplanting | 84.5 |
| 68.4 | **Openbaar gebied fase 2** |  |
| 91.1 | Grondverzet |  |
| 91.2 | Bekabeling en verlichting | 91.1 |
| 91.3 | Oevers | 91.2 SS |
| 91.4 | Verharding | 91.3 |
| 91.5 | Beplanting | 91.4 |
| 39.3 | **FASE 3** |  |
| 97.1 | **Realisatie woningen fase 3** |  |
| 98.1 | Woning 21 | 69.10 SS |
| 98.2 | Woning 22 | 98.1 SS |
| 98.3 | Woning 23 | 98.2 SS |
| 98.4 | Woning 24 | 98.3 SS |
| 98.5 | Woning 25 | 98.4 SS |
| 98.6 | Woning 26 | 98.5 SS |
| 98.7 | Woning 27 | 98.6 SS |
| 98.8 | Woning 28 | 98.7 SS |
| 98.9 | Woning 29 | 98.8 SS |
| 98.10 | Woning 30 | 98.9 SS |
| 97.2 | Verwijderen Bouwplaatsinrichting incl. Hellingbaan |  |

| ID | Activity | Predecessors |
| --- | --- | --- |
| 97.3 | **Realisatie steigers fase 3** |  |
| 110.1 | Drijvend steiger 5 |  |
| 110.2 | Drijvend steiger 6 | 110.1 |
| 97.4 | **Openbaar ruimte fase 3** |  |
| 113.1 | Landhoofd brug (steiger 5) |  |
| 113.2 | Meterkasten en aansluiten (steiger 5 en 6) | 113.1 |
| 113.3 | Bekabeling en verlichting | 113.2 |
| 113.4 | Oevers | 113.3 SS |
| 113.5 | Verharding | 113.4 |
| 113.6 | Beplanting | 113.5 |
| 97.5 | **Openbaar gebied fase 3** |  |
| 120.1 | Grondverzet |  |
| 120.2 | Bekabeling en verlichting | 120.1 |
| 120.3 | Oevers | 120.2 SS |
| 120.4 | Verharding | 120.3 |
| 120.5 | Beplanting | 120.4 |
