# Construction schedule v1.0

Schedule from an IFC model, 2027-03-01 to 2027-12-01.
New-Build Villa, Wassenaar

## Schedule

| ID | Activity | Type | Duration | Start | Finish | Predecessors | Planned start | Planned finish | Total float | Free float | Resources |
| --- | --- | --- | --- | --- | --- | --- | --- | --- | --- | --- | --- |
| 1 | **1. Preparation** |  | 5d | 2027-03-01 | 2027-03-08 |  | 2027-03-01 | 2027-03-05 | 0d |  |  |
| 1.1 | Set up site |  | 4h | 2027-03-01 | 2027-03-01 |  |  |  | 0d |  |  |
| 1.2 | Protect trees |  | 2d | 2027-03-04 | 2027-03-05 | 1.1 | 2027-03-01 | 2027-03-02 | 171d | 0d |  |
| 1.3 | Start of construction | milestone | 0d | 2027-03-08 | 2027-03-08 | 1.2 | 2027-03-01 | 2027-03-01 | 171d |  |  |
| 2 | **2. Earthworks & foundations** |  | 5d | 2027-03-04 | 2027-04-22 |  | 2027-03-01 | 2027-03-05 | 0d |  |  |
| 2.1 | Excavate swimming pool |  | 8d | 2027-03-04 | 2027-03-15 | 1.1 SS+3d | 2027-03-01 | 2027-03-10 | 0d |  |  |
| 2.2 | Excavate foundation trenches |  | 5d | 2027-03-16 | 2027-03-22 | 2.1 | 2027-03-01 | 2027-03-05 | 140d | 0d |  |
| 2.3 | Pour foundations |  | 8d | 2027-03-23 | 2027-04-05 | 2.2 | 2027-03-01 | 2027-03-10 | 140d | 0d |  |
| 2.4 | Sewerage and drainage |  | 5d | 2027-04-06 | 2027-04-12 | 2.3 | 2027-03-01 | 2027-03-05 | 140d | 0d |  |
| 2.5 | Fill crawl space |  | 3d | 2027-04-13 | 2027-04-15 | 2.4 | 2027-03-01 | 2027-03-03 | 140d | 0d |  |
| 2.6 | Ground floor slab |  | 5d | 2027-04-16 | 2027-04-22 | 2.5 | 2027-03-01 | 2027-03-05 | 140d |  |  |
| 3 | **3. Structural works** |  | 5d | 2027-03-09 | 2027-05-18 |  | 2027-03-01 | 2027-03-05 | 0d |  |  |
| 3.1 | Ground floor masonry |  | 12d | 2027-03-09 | 2027-03-24 | 2.1 SS | 2027-03-01 | 2027-03-16 | 0d |  | Bricklayers |
| 3.2 | Pour upper floor slab |  | 5d | 2027-03-25 | 2027-04-02 | 3.1 | 2027-03-01 | 2027-03-05 | 0d |  |  |
| 3.3 | Upper floor masonry |  | 10d | 2027-04-05 | 2027-04-16 | 3.2 | 2027-03-01 | 2027-03-12 | 0d |  | Bricklayers |
| 3.4 | Timber roof structure |  | 10d | 2027-04-19 | 2027-05-03 | 3.3 | 2027-03-01 | 2027-03-12 | 0d |  | Carpenters |
| 3.5 | Roof tiles |  | 5d | 2027-05-04 | 2027-05-12 | 3.4 | 2027-03-01 | 2027-03-05 | 0d |  | Carpenters |
| 3.6 | Build chimneys |  | 3d | 2027-05-13 | 2027-05-18 | 3.5 | 2027-03-01 | 2027-03-03 | 0d |  | Bricklayers |
| 3.7 | Topping out | milestone | 0d | 2027-05-18 | 2027-05-18 | 3.6 | 2027-03-01 | 2027-03-01 | 126d |  |  |
| 4 | **4. Facade & roof** |  | 5d | 2027-05-03 | 2027-06-10 |  | 2027-03-01 | 2027-03-05 | 0d |  |  |
| 4.1 | Facade insulation |  | 8d | 2027-05-03 | 2027-05-14 | 3.6 FS-9d | 2027-03-01 | 2027-03-10 | 0d |  |  |
| 4.2 | Hardwood window frames |  | 8d | 2027-05-18 | 2027-05-27 | 4.1 | 2027-03-01 | 2027-03-10 | 0d |  | Carpenters |
| 4.3 | Triple glazing HR+++ |  | 5d | 2027-05-28 | 2027-06-03 | 4.2 | 2027-03-01 | 2027-03-05 | 0d |  | Carpenters |
| 4.4 | Zinc gutters and downpipes |  | 5d | 2027-06-04 | 2027-06-10 | 4.3, 3.6 FF+2d | 2027-03-01 | 2027-03-05 | 0d |  |  |
| 4.5 | Wind and weathertight | milestone | 0d | 2027-06-10 | 2027-06-10 | 4.4 | 2027-03-01 | 2027-03-01 | 109d |  |  |

| ID | Activity | Type | Duration | Start | Finish | Predecessors | Planned start | Planned finish | Total float | Free float | Resources |
| --- | --- | --- | --- | --- | --- | --- | --- | --- | --- | --- | --- |
| 5 | **5. Building services** |  | 5d | 2027-06-11 | 2027-09-01 |  | 2027-03-01 | 2027-03-05 | 0d |  |  |
| 5.1 | Electrical first fix |  | 8d | 2027-06-11 | 2027-06-22 | 4.4 | 2027-03-01 | 2027-03-10 | 0d |  | MEP fitters |
| 5.2 | Plumbing first fix |  | 8d | 2027-06-15 | 2027-06-24 | 5.1 SS+2d | 2027-03-01 | 2027-03-10 | 65d | 0d | MEP fitters |
| 5.3 | Underfloor heating |  | 8d | 2027-06-25 | 2027-07-06 | 5.2 | 2027-03-01 | 2027-03-10 | 65d | 0d | MEP fitters |
| 5.4 | Home automation system |  | 5d | 2027-07-07 | 2027-07-13 | 5.3 | 2027-03-01 | 2027-03-05 | 65d | 0d | MEP fitters |
| 5.5 | Pool plant |  | 10d | 2027-07-14 | 2027-08-17 | 5.4 | 2027-03-01 | 2027-03-12 | 65d | 0d | MEP fitters |
| 5.6 | Heat pump and ground loop |  | 8d | 2027-08-18 | 2027-08-27 | 5.5 | 2027-03-01 | 2027-03-10 | 65d | 0d | MEP fitters |
| 5.7 | Solar panels |  | 3d | 2027-08-30 | 2027-09-01 | 5.6 | 2027-03-01 | 2027-03-03 | 65d |  | MEP fitters |
| 6 | **6. Fit-out** |  | 5d | 2027-07-16 | 2027-10-26 |  | 2027-03-01 | 2027-03-05 | 0d |  |  |
| 6.1 | Plastering, walls and ceilings |  | 12d | 2027-07-16 | 2027-08-23 | 5.1 SS+25d | 2027-03-01 | 2027-03-16 | 0d |  | Plasterers |
| 6.2 | Luxury bathroom tiling |  | 10d | 2027-08-24 | 2027-09-06 | 6.1 | 2027-03-01 | 2027-03-12 | 0d |  | Tilers |
| 6.3 | Natural stone floors |  | 8d | 2027-09-07 | 2027-09-16 | 6.2 | 2027-03-01 | 2027-03-10 | 0d |  | Tilers |
| 6.4 | Oak staircases |  | 5d | 2027-09-17 | 2027-09-23 | 6.3 | 2027-03-01 | 2027-03-05 | 0d |  | Carpenters |
| 6.5 | Bespoke kitchen |  | 8d | 2027-09-24 | 2027-10-05 | 6.4 | 2027-03-01 | 2027-03-10 | 0d |  | Carpenters |
| 6.6 | Painting |  | 10d | 2027-10-06 | 2027-10-19 | 6.5 | 2027-03-01 | 2027-03-12 | 0d |  | Painters |
| 6.7 | Second-fix sanitary fittings |  | 5d | 2027-10-20 | 2027-10-26 | 6.6 | 2027-03-01 | 2027-03-05 | 0d |  |  |
| 7 | **7. External works & handover** |  | 5d | 2027-10-27 | 2027-12-01 |  | 2027-03-01 | 2027-03-05 | 0d |  |  |
| 7.1 | Complete swimming pool |  | 8d | 2027-10-27 | 2027-11-05 | 6.7 | 2027-03-01 | 2027-03-10 | 0d |  |  |
| 7.2 | Garden landscaping |  | 10d | 2027-11-08 | 2027-11-19 | 7.1 | 2027-03-01 | 2027-03-12 | 0d |  |  |
| 7.3 | Driveway and paving |  | 5d | 2027-11-22 | 2027-11-26 | 7.2 | 2027-03-01 | 2027-03-05 | 0d |  |  |
| 7.4 | Cleaning |  | 3d | 2027-11-29 | 2027-12-01 | 7.3 | 2027-03-01 | 2027-03-03 | 0d |  |  |
| 7.5 | Handover | milestone | 0d | 2027-12-01 | 2027-12-01 | 7.4 | 2027-03-01 | 2027-03-01 | 0d |  |  |
